# Bomba de Gasolina

Schedule from MS Project, 2021-04-12 to 2021-09-22, status date 2021-08-11, costs in $, A marks actual dates.

## Calendars

- Standard: Mon-Fri 08:00-12:00, 13:00-17:00; Sat-Sun off.

## Resources

| Resource | Unit | Rate |
| --- | --- | --- |
| Construtor 1 |  | 50 |
| Construtor 2 |  | 50 |
| Construtor 3 |  | 50 |
| Construtor 4 |  | 50 |
| Gerente de Projeto |  | 150 |
| Material Elétrico |  |  |
| Material Hidráulico |  |  |
| Areia | Saco | 20 |
| Cimento | Saco | 32 |
| Tinta | Lata | 85 |
| Ferragens |  |  |
| Telhas | Milheiro | 800 |
| Bomba | Unidade | 3000 |
| Tijolo | Milheiro | 600 |

## Schedule

| ID | WBS | Task | Type | Duration | Start | Finish | Predecessors | Complete | Remaining | Baseline start | Baseline finish | Baseline duration | Total slack | Free slack | Resources | Work | Actual work | Cost | Baseline cost | Actual cost | Área |
| --- | --- | --- | --- | --- | --- | --- | --- | --- | --- | --- | --- | --- | --- | --- | --- | --- | --- | --- | --- | --- | --- |
| 1 | 1 | **Planejamento do Projeto** |  | 19d | 2021-04-12 A | 2021-05-06 A |  | 100% |  | 2021-04-12 | 2021-05-06 | 19d |  |  |  | 152h | 152h | 22,800 | 22,800 | 22,800 | Engenharia |
| 2 | 1.1 | Criar a Declaração de Escopo |  | 10d | 2021-04-12 A | 2021-04-23 A |  | 100% |  | 2021-04-12 | 2021-04-23 | 10d |  |  | Gerente de Projeto | 80h | 80h | 12,000 | 12,000 | 12,000 | Engenharia |
| 3 | 1.2 | Criar o Plano de Comunicação |  | 1d | 2021-04-26 A | 2021-04-26 A | 2 | 100% |  | 2021-04-26 | 2021-04-26 | 1d |  |  | Gerente de Projeto | 8h | 8h | 1,200 | 1,200 | 1,200 | Engenharia |
| 4 | 1.3 | Planejar os Riscos |  | 2d | 2021-04-27 A | 2021-04-28 A | 3 | 100% |  | 2021-04-27 | 2021-04-28 | 2d |  |  | Gerente de Projeto | 16h | 16h | 2,400 | 2,400 | 2,400 | Engenharia |
| 5 | 1.4 | Planejar o Cronograma |  | 5d | 2021-04-29 A | 2021-05-05 A | 4 | 100% |  | 2021-04-29 | 2021-05-05 | 5d |  |  | Gerente de Projeto | 40h | 40h | 6,000 | 6,000 | 6,000 | Engenharia |
| 6 | 1.5 | Consolidar o Plano do Projeto |  | 1d | 2021-05-06 A | 2021-05-06 A | 5 | 100% |  | 2021-05-06 | 2021-05-06 | 1d |  |  | Gerente de Projeto | 8h | 8h | 1,200 | 1,200 | 1,200 | Engenharia |
| 7 | 1.6 | Planejamento Realizado | milestone | 0d | 2021-05-06 A | 2021-05-06 A | 6 | 100% |  | 2021-05-06 | 2021-05-06 | 0d |  |  | Gerente de Projeto |  |  |  |  |  | Engenharia |
| 8 | 2 | **Construção do Tanque** |  | 95d | 2021-05-07 A | 2021-09-16 |  | 54% | 44d | 2021-05-07 | 2021-09-16 | 95d | 0d |  |  | 1400h | 696h | 91,700 | 90,200 | 56,500 | Engenharia |
| 9 | 2.1 | Comprar o material para o tanque |  | 15d | 2021-05-07 A | 2021-05-27 A | 7 | 100% |  | 2021-05-07 | 2021-05-27 | 15d |  |  | Areia [100 Saco]; Cimento [100 Saco]; Ferragens [0.1%]; Material Elétrico [0.1%]; Material Hidráulico [0.1%]; Construtor 1 | 120h | 120h | 27,700 | 26,200 | 27,700 | Engenharia |
| 10 | 2.2 | Preparar o local do tanque e fazer a fundação |  | 30d | 2021-05-28 A | 2021-07-08 A | 9 | 100% |  | 2021-05-28 | 2021-07-08 | 30d |  |  | Construtor 1; Construtor 2 | 480h | 480h | 24,000 | 24,000 | 24,000 | Engenharia |
| 11 | 2.3 | Construir o tanque |  | 30d | 2021-07-09 A | 2021-08-19 | 10 | 20% | 24d | 2021-07-09 | 2021-08-19 | 30d | 0d |  | Construtor 2; Construtor 1 | 480h | 96h | 24,000 | 24,000 | 4,800 | Engenharia |
| 12 | 2.4 | Revestir o tanque |  | 20d | 2021-08-20 | 2021-09-16 | 11 |  |  | 2021-08-20 | 2021-09-16 | 20d | 0d |  | Construtor 1; Construtor 2 | 320h |  | 16,000 | 16,000 |  | Engenharia |
| 13 | 2.5 | Tanque construído | milestone | 0d | 2021-09-16 | 2021-09-16 | 12 |  |  | 2021-09-16 | 2021-09-16 | 0d | 0d |  |  |  |  |  |  |  | Engenharia |
| 14 | 3 | **Cobertura** |  | 81d | 2021-05-07 A | 2021-08-27 |  | 84% | 13d | 2021-05-07 | 2021-06-08 | 23d | 14d |  |  | 1056h | 848h | 59,160 | 12,460 | 48,760 | Engenharia |
| 15 | 3.1 | Comprar o material para a cobertura |  | 15d | 2021-05-07 A | 2021-05-27 A | 7 | 100% |  | 2021-05-07 | 2021-05-27 | 15d |  |  | Ferragens [0.1%]; Areia [20 Saco]; Cimento [10 Saco]; Telhas [1 Milheiro]; Tinta [4 Lata]; Tijolo [2 Milheiro]; Material Elétrico [0.1%]; Material Hidráulico [0.1%] |  |  | 6,360 | 6,060 | 6,360 | Engenharia |
| 16 | 3.2 | Instalar a estrutura |  | 2d | 2021-05-28 A | 2021-05-31 A | 15 | 100% |  | 2021-05-28 | 2021-05-31 | 2d |  |  | Construtor 4; Construtor 3 | 32h | 32h | 1,600 | 1,600 | 1,600 | Engenharia |
| 17 | 3.3 | Fazer a cobertura |  | 1d | 2021-06-01 A | 2021-06-01 A | 16 | 100% |  | 2021-06-01 | 2021-06-01 | 1d |  |  | Construtor 4; Construtor 3 | 16h | 16h | 800 | 800 | 800 | Engenharia |
| 18 | 3.4 | Fazer as instalações elétricas |  | 2d | 2021-06-02 A | 2021-06-03 A | 17 | 100% |  | 2021-06-02 | 2021-06-03 | 2d |  |  | Construtor 3; Construtor 4 | 32h | 32h | 1,600 | 1,600 | 1,600 | Engenharia |
| 19 | 3.5 | Fazer as instalações hidráulicas |  | 60d | 2021-06-04 A | 2021-08-26 | 18 | 80% | 12d | 2021-06-04 | 2021-06-07 | 2d | 14d | 0d | Construtor 3; Construtor 4 | 960h | 768h | 48,000 | 1,600 | 38,400 | Engenharia |
| 20 | 3.6 | Instalar a prateleira |  | 1d | 2021-08-27 | 2021-08-27 | 19 |  |  | 2021-06-08 | 2021-06-08 | 1d | 14d | 0d | Construtor 3; Construtor 4 | 16h |  | 800 | 800 |  | Engenharia |
| 21 | 3.7 | Estrutura construída | milestone | 0d | 2021-08-27 | 2021-08-27 | 20 |  |  | 2021-06-08 | 2021-06-08 | 0d | 14d |  |  |  |  |  |  |  | Engenharia |
| 22 | 4 | **Bomba de Gasolina** |  | 4d | 2021-09-17 | 2021-09-22 |  |  |  | 2021-09-17 | 2021-09-22 | 4d | 0d |  |  | 32h |  | 4,485 | 4,485 |  | Engenharia |
| 23 | 4.1 | Fazer as instalações elétricas da bomba |  | 1d | 2021-09-17 | 2021-09-17 | 21, 13 |  |  | 2021-09-17 | 2021-09-17 | 1d | 0d |  | Construtor 2; Material Elétrico [0.1%]; Material Hidráulico [0.1%]; Tinta [1 Lata] | 8h |  | 2,485 | 2,485 |  | Engenharia |
| 24 | 4.2 | Fazer as instlações hidráulicas da bomba |  | 1d | 2021-09-20 | 2021-09-20 | 23 |  |  | 2021-09-20 | 2021-09-20 | 1d | 0d |  | Construtor 2 | 8h |  | 400 | 400 |  | Engenharia |
| 25 | 4.3 | Fazer a ligação da bomba ao tanque de gasolina |  | 1d | 2021-09-21 | 2021-09-21 | 24 |  |  | 2021-09-21 | 2021-09-21 | 1d | 0d |  | Construtor 2 | 8h |  | 400 | 400 |  | Engenharia |
| 26 | 4.4 | Fazer os testes exigidos |  | 1d | 2021-09-22 | 2021-09-22 | 25 |  |  | 2021-09-22 | 2021-09-22 | 1d | 0d |  | Gerente de Projeto | 8h |  | 1,200 | 1,200 |  | Engenharia |
| 27 | 4.5 | Bomba instalada | milestone | 0d | 2021-09-22 | 2021-09-22 | 26 |  |  | 2021-09-22 | 2021-09-22 | 0d | 0d |  |  |  |  |  |  |  |  |
