# Instalação dos equipamentos

Schedule from MS Project, 2021-06-28 to 2021-12-30, status date 2021-08-11, costs in $, A marks actual dates.

## Calendars

- Standard: Mon-Fri 08:00-12:00, 13:00-17:00; Sat-Sun off.

## Resources

| Resource | Rate |
| --- | --- |
| Gerente de Projetos | 120 |
| Instalador 1 | 40 |
| Instalador 2 | 40 |
| Engenheiro | 120 |
| Equipamentos | 200000 |

## Schedule

| ID | WBS | Task | Type | Duration | Start | Finish | Predecessors | Complete | Remaining | Baseline start | Baseline finish | Baseline duration | Total slack | Resources | Work | Actual work | Cost | Baseline cost | Actual cost |
| --- | --- | --- | --- | --- | --- | --- | --- | --- | --- | --- | --- | --- | --- | --- | --- | --- | --- | --- | --- |
| 1 | 1 | **Planejamento do Projeto** |  | 11d | 2021-06-28 A | 2021-07-12 A |  | 100% |  | 2021-06-28 | 2021-07-12 | 11d |  |  | 88h | 88h | 10,560 | 10,560 | 10,560 |
| 2 | 1.1 | Criar a Declaração de Escopo |  | 2d | 2021-06-28 A | 2021-06-29 A |  | 100% |  | 2021-06-28 | 2021-06-29 | 2d |  | Gerente de Projetos | 16h | 16h | 1,920 | 1,920 | 1,920 |
| 3 | 1.2 | Criar o Plano de Comunicação |  | 1d | 2021-06-30 A | 2021-06-30 A | 2 | 100% |  | 2021-06-30 | 2021-06-30 | 1d |  | Gerente de Projetos | 8h | 8h | 960 | 960 | 960 |
| 4 | 1.3 | Planejar os Riscos |  | 2d | 2021-07-01 A | 2021-07-02 A | 3 | 100% |  | 2021-07-01 | 2021-07-02 | 2d |  | Gerente de Projetos | 16h | 16h | 1,920 | 1,920 | 1,920 |
| 5 | 1.4 | Planejar o Cronograma |  | 3d | 2021-07-05 A | 2021-07-07 A | 4 | 100% |  | 2021-07-05 | 2021-07-07 | 3d |  | Gerente de Projetos | 24h | 24h | 2,880 | 2,880 | 2,880 |
| 6 | 1.5 | Planejar as aquisições |  | 2d | 2021-07-08 A | 2021-07-09 A | 5 | 100% |  | 2021-07-08 | 2021-07-09 | 2d |  | Gerente de Projetos | 16h | 16h | 1,920 | 1,920 | 1,920 |
| 7 | 1.6 | Consolidar o Plano do Projeto |  | 1d | 2021-07-12 A | 2021-07-12 A | 6 | 100% |  | 2021-07-12 | 2021-07-12 | 1d |  | Gerente de Projetos | 8h | 8h | 960 | 960 | 960 |
| 8 | 1.7 | Planejamento Realizado | milestone | 0d | 2021-07-12 A | 2021-07-12 A | 7 | 100% |  | 2021-07-12 | 2021-07-12 | 0d |  |  |  |  |  |  |  |
| 9 | 2 | **Equipamentos** |  | 90d | 2021-07-13 A | 2021-11-15 |  | 7% | 84d | 2021-07-13 | 2021-11-15 | 90d | 0d |  | 720h | 48h | 86,400 | 86,400 | 5,760 |
| 10 | 2.1 | Contatar Fornecedores |  | 30d | 2021-07-13 A | 2021-08-23 | 8 | 20% | 24d | 2021-07-13 | 2021-08-23 | 30d | 0d | Engenheiro | 240h | 48h | 28,800 | 28,800 | 5,760 |
| 11 | 2.2 | Receber propostas |  | 10d | 2021-08-24 | 2021-09-06 | 10 |  |  | 2021-08-24 | 2021-09-06 | 10d | 0d | Engenheiro | 80h |  | 9,600 | 9,600 |  |
| 12 | 2.3 | Selecionar os fornecedores |  | 10d | 2021-09-07 | 2021-09-20 | 11 |  |  | 2021-09-07 | 2021-09-20 | 10d | 0d | Engenheiro | 80h |  | 9,600 | 9,600 |  |
| 13 | 2.4 | Realizar as aquisições |  | 40d | 2021-09-21 | 2021-11-15 | 12 |  |  | 2021-09-21 | 2021-11-15 | 40d | 0d | Engenheiro | 320h |  | 38,400 | 38,400 |  |
| 14 | 2.5 | Aquisições feitas | milestone | 0d | 2021-11-15 | 2021-11-15 | 13 |  |  | 2021-11-15 | 2021-11-15 | 0d | 0d |  |  |  |  |  |  |
| 15 | 3 | **Instalação** |  | 25d | 2021-11-16 | 2021-12-20 |  |  |  | 2021-11-16 | 2021-12-20 | 25d | 0d |  | 264h |  | 216,320 | 216,320 |  |
| 16 | 3.1 | Fazer o projeto físico das instalações |  | 4d | 2021-11-16 | 2021-11-19 | 14 |  |  | 2021-11-16 | 2021-11-19 | 4d | 0d | Engenheiro | 32h |  | 3,840 | 3,840 |  |
| 17 | 3.2 | Conferir instalações hidráulica e física |  | 2d | 2021-11-22 | 2021-11-23 | 16 |  |  | 2021-11-22 | 2021-11-23 | 2d | 0d | Instalador 1 | 16h |  | 640 | 640 |  |
| 18 | 3.3 | Fazer os ajustes necessários |  | 4d | 2021-11-24 | 2021-11-29 | 17 |  |  | 2021-11-24 | 2021-11-29 | 4d | 0d | Instalador 1 | 32h |  | 1,280 | 1,280 |  |
| 19 | 3.4 | Receber os equipamentos |  | 5d | 2021-11-30 | 2021-12-06 | 18 |  |  | 2021-11-30 | 2021-12-06 | 5d | 0d | Engenheiro | 40h |  | 4,800 | 4,800 |  |
| 20 | 3.5 | Equipamentos Recebidos |  | 1d | 2021-12-07 | 2021-12-07 | 19 |  |  | 2021-12-07 | 2021-12-07 | 1d | 0d | Equipamentos |  |  | 200,000 | 200,000 |  |
| 21 | 3.6 | Distribuir os equipamentos no Galpão |  | 4d | 2021-12-08 | 2021-12-13 | 20 |  |  | 2021-12-08 | 2021-12-13 | 4d | 0d | Instalador 1; Instalador 2 | 64h |  | 2,560 | 2,560 |  |
| 22 | 3.7 | Instalar os equipamentos |  | 5d | 2021-12-14 | 2021-12-20 | 21 |  |  | 2021-12-14 | 2021-12-20 | 5d | 0d | Instalador 1; Instalador 2 | 80h |  | 3,200 | 3,200 |  |
| 23 | 3.8 | Instalações feitas | milestone | 0d | 2021-12-20 | 2021-12-20 | 22 |  |  | 2021-12-20 | 2021-12-20 | 0d | 0d |  |  |  |  |  |  |
| 24 | 4 | **Testes** |  | 8d | 2021-12-21 | 2021-12-30 |  |  |  | 2021-12-21 | 2021-12-30 | 8d | 0d |  | 112h |  | 5,760 | 5,760 |  |
| 25 | 4.1 | Fazer testes de elétrica |  | 2d | 2021-12-21 | 2021-12-22 | 23 |  |  | 2021-12-21 | 2021-12-22 | 2d | 0d | Instalador 1 | 16h |  | 640 | 640 |  |
| 26 | 4.2 | Fazer testes de hidráulica |  | 2d | 2021-12-23 | 2021-12-24 | 25 |  |  | 2021-12-23 | 2021-12-24 | 2d | 0d | Instalador 1 | 16h |  | 640 | 640 |  |
| 27 | 4.3 | Conferir equipamentos |  | 2d | 2021-12-27 | 2021-12-28 | 26 |  |  | 2021-12-27 | 2021-12-28 | 2d | 0d | Instalador 1; Instalador 2 | 32h |  | 1,280 | 1,280 |  |
| 28 | 4.4 | Testar equipamentos |  | 2d | 2021-12-29 | 2021-12-30 | 27 |  |  | 2021-12-29 | 2021-12-30 | 2d | 0d | Engenheiro; Instalador 1; Instalador 2 | 48h |  | 3,200 | 3,200 |  |
| 29 | 4.5 | Testes realizados | milestone | 0d | 2021-12-30 | 2021-12-30 | 28 |  |  | 2021-12-30 | 2021-12-30 | 0d | 0d |  |  |  |  |  |  |
