# Reforma do Galpão

Schedule from MS Project, 2021-03-15 to 2021-08-30, status date 2021-08-11, costs in $, A marks actual dates.

## Calendars

- Standard: Mon-Fri 08:00-12:00, 13:00-17:00; Sat-Sun off.

## Resources

| Resource | Unit | Rate |
| --- | --- | --- |
| Recurso 1 |  | 50 |
| Recurso 2 |  | 50 |
| Gerente de Projeto |  | 80 |
| Construtora |  | 200 |
| Material | Unidade | 80000 |

## Schedule

| ID | WBS | Task | Type | Duration | Start | Finish | Predecessors | Complete | Baseline start | Baseline finish | Baseline duration | Resources | Work | Actual work | Cost | Baseline cost | Actual cost |
| --- | --- | --- | --- | --- | --- | --- | --- | --- | --- | --- | --- | --- | --- | --- | --- | --- | --- |
| 1 | 1 | **Planejamento do Projeto** |  | 10d | 2021-03-15 A | 2021-03-26 A |  | 100% | 2021-03-15 | 2021-03-26 | 10d |  | 80h | 80h | 6,400 | 6,400 | 6,400 |
| 2 | 1.1 | Criar a Declaração de Escopo |  | 3d | 2021-03-15 A | 2021-03-17 A |  | 100% | 2021-03-15 | 2021-03-17 | 3d | Gerente de Projeto | 24h | 24h | 1,920 | 1,920 | 1,920 |
| 3 | 1.2 | Criar o Plano de Comunicação |  | 1d | 2021-03-18 A | 2021-03-18 A | 2 | 100% | 2021-03-18 | 2021-03-18 | 1d | Gerente de Projeto | 8h | 8h | 640 | 640 | 640 |
| 4 | 1.3 | Planejar os Riscos |  | 2d | 2021-03-19 A | 2021-03-22 A | 3 | 100% | 2021-03-19 | 2021-03-22 | 2d | Gerente de Projeto | 16h | 16h | 1,280 | 1,280 | 1,280 |
| 5 | 1.4 | Planejar o Cronograma |  | 3d | 2021-03-23 A | 2021-03-25 A | 4 | 100% | 2021-03-23 | 2021-03-25 | 3d | Gerente de Projeto | 24h | 24h | 1,920 | 1,920 | 1,920 |
| 6 | 1.5 | Consolidar o Plano do Projeto |  | 1d | 2021-03-26 A | 2021-03-26 A | 5 | 100% | 2021-03-26 | 2021-03-26 | 1d | Gerente de Projeto | 8h | 8h | 640 | 640 | 640 |
| 7 | 1.6 | Planejamento Realizado | milestone | 0d | 2021-03-26 A | 2021-03-26 A | 6 | 100% | 2021-03-26 | 2021-03-26 | 0d |  |  |  |  |  |  |
| 8 | 2 | **Contratação** |  | 17d | 2021-03-29 A | 2021-04-20 A |  | 100% | 2021-03-29 | 2021-04-20 | 17d |  | 144h | 144h | 10,000 | 9,600 | 10,000 |
| 9 | 2.1 | Detalhar os requisitos |  | 5d | 2021-03-29 A | 2021-04-02 A | 7 | 100% | 2021-03-29 | 2021-04-02 | 5d | Recurso 1 | 40h | 40h | 2,000 | 2,000 | 2,000 |
| 10 | 2.2 | Obter propostas |  | 10d | 2021-04-05 A | 2021-04-16 A | 9 | 100% | 2021-04-05 | 2021-04-16 | 10d | Gerente de Projeto | 80h | 80h | 6,400 | 6,400 | 6,400 |
| 11 | 2.3 | Selecionar o construtor |  | 1d | 2021-04-19 A | 2021-04-19 A | 10 | 100% | 2021-04-19 | 2021-04-19 | 1d | Recurso 1; Recurso 2 | 16h | 16h | 800 | 800 | 800 |
| 12 | 2.4 | Contratar construtor |  | 1d | 2021-04-20 A | 2021-04-20 A | 11 | 100% | 2021-04-20 | 2021-04-20 | 1d | Recurso 2 | 8h | 8h | 800 | 400 | 800 |
| 13 | 2.5 | Construtor contratado | milestone | 0d | 2021-04-20 A | 2021-04-20 A | 12 | 100% | 2021-04-20 | 2021-04-20 | 0d |  |  |  |  |  |  |
| 14 | 3 | **Material** |  | 27d | 2021-04-21 A | 2021-05-27 A |  | 100% | 2021-04-21 | 2021-05-27 | 27d |  | 56h | 56h | 94,000 | 84,000 | 94,000 |
| 15 | 3.1 | Pesquisar fornecedores |  | 5d | 2021-04-21 A | 2021-04-27 A | 13 | 100% | 2021-04-21 | 2021-04-27 | 5d | Gerente de Projeto | 40h | 40h | 3,200 | 3,200 | 3,200 |
| 16 | 3.2 | Analizar preços |  | 2d | 2021-04-28 A | 2021-04-29 A | 15 | 100% | 2021-04-28 | 2021-04-29 | 2d | Recurso 2 | 16h | 16h | 800 | 800 | 800 |
| 17 | 3.3 | Comprar o material |  | 20d | 2021-04-30 A | 2021-05-27 A | 16 | 100% | 2021-04-30 | 2021-05-27 | 20d | Material [1 Unidade] |  |  | 90,000 | 80,000 | 90,000 |
| 18 | 3.4 | Material adquirido | milestone | 0d | 2021-05-27 A | 2021-05-27 A | 17 | 100% | 2021-05-27 | 2021-05-27 | 0d |  |  |  |  |  |  |
| 19 | 4 | **Obra** |  | 67d | 2021-05-28 A | 2021-08-30 A |  | 100% | 2021-05-28 | 2021-08-30 | 67d |  | 536h | 536h | 107,200 | 107,200 | 107,200 |
| 20 | 4.1 | Fazer a alvenaria |  | 15d | 2021-05-28 A | 2021-06-17 A | 18 | 100% | 2021-05-28 | 2021-06-17 | 15d | Construtora | 120h | 120h | 24,000 | 24,000 | 24,000 |
| 21 | 4.2 | Revisar parte elétrica |  | 5d | 2021-06-18 A | 2021-06-24 A | 20 | 100% | 2021-06-18 | 2021-06-24 | 5d | Construtora | 40h | 40h | 8,000 | 8,000 | 8,000 |
| 22 | 4.3 | Revisar parte hidráulica |  | 5d | 2021-06-25 A | 2021-07-01 A | 21 | 100% | 2021-06-25 | 2021-07-01 | 5d | Construtora | 40h | 40h | 8,000 | 8,000 | 8,000 |
| 23 | 4.4 | Pintar as paredes |  | 20d | 2021-07-02 A | 2021-07-29 A | 22 | 100% | 2021-07-02 | 2021-07-29 | 20d | Construtora | 160h | 160h | 32,000 | 32,000 | 32,000 |
| 24 | 4.5 | Instalar o piso |  | 10d | 2021-07-30 A | 2021-08-12 A | 23 | 100% | 2021-07-30 | 2021-08-12 | 10d | Construtora | 80h | 80h | 16,000 | 16,000 | 16,000 |
| 25 | 4.6 | Reformar o telhado |  | 12d | 2021-08-13 A | 2021-08-30 A | 24 | 100% | 2021-08-13 | 2021-08-30 | 12d | Construtora | 96h | 96h | 19,200 | 19,200 | 19,200 |
| 26 | 4.7 | Obra finalizada | milestone | 0d | 2021-08-30 A | 2021-08-30 A | 25 | 100% | 2021-08-30 | 2021-08-30 | 0d | Construtora |  |  |  |  |  |
