# Construção do Estacionamento

Schedule from MS Project, 2021-03-15 to 2021-12-29, status date 2021-08-11, costs in $, A marks actual dates.

## Calendars

- Standard: Mon-Fri 08:00-12:00, 13:00-17:00; Sat-Sun off.

## Resources

| Resource | Unit | Rate |
| --- | --- | --- |
| Recurso 1 |  | 80 |
| Recurso 2 |  | 50 |
| Recurso 3 |  | 95 |
| Recurso 4 |  | 80 |
| Gerente de projeto |  | 120 |
| Material para a construção | Unidade | 150000 |
| Construtora |  | 400 |

## Schedule

| ID | WBS | Task | Type | Duration | Start | Finish | Predecessors | Complete | Remaining | Baseline start | Baseline finish | Baseline duration | Total slack | Resources | Work | Actual work | Cost | Baseline cost | Actual cost |
| --- | --- | --- | --- | --- | --- | --- | --- | --- | --- | --- | --- | --- | --- | --- | --- | --- | --- | --- | --- |
| 1 | 1 | **Planejamento do Projeto** |  | 21d | 2021-03-15 A | 2021-04-12 A |  | 100% |  | 2021-03-15 | 2021-04-12 | 21d |  |  | 168h | 168h | 20,160 | 20,160 | 20,160 |
| 2 | 1.1 | Criar a Declaração de Escopo |  | 10d | 2021-03-15 A | 2021-03-26 A |  | 100% |  | 2021-03-15 | 2021-03-26 | 10d |  | Gerente de projeto | 80h | 80h | 9,600 | 9,600 | 9,600 |
| 3 | 1.2 | Criar o Plano de Comunicação |  | 2d | 2021-03-29 A | 2021-03-30 A | 2 | 100% |  | 2021-03-29 | 2021-03-30 | 2d |  | Gerente de projeto | 16h | 16h | 1,920 | 1,920 | 1,920 |
| 4 | 1.3 | Planejar os Riscos |  | 2d | 2021-03-31 A | 2021-04-01 A | 3 | 100% |  | 2021-03-31 | 2021-04-01 | 2d |  | Gerente de projeto | 16h | 16h | 1,920 | 1,920 | 1,920 |
| 5 | 1.4 | Planejar o Cronograma |  | 5d | 2021-04-02 A | 2021-04-08 A | 4 | 100% |  | 2021-04-02 | 2021-04-08 | 5d |  | Gerente de projeto | 40h | 40h | 4,800 | 4,800 | 4,800 |
| 6 | 1.5 | Consolidar o Plano do Projeto |  | 2d | 2021-04-09 A | 2021-04-12 A | 5 | 100% |  | 2021-04-09 | 2021-04-12 | 2d |  | Gerente de projeto | 16h | 16h | 1,920 | 1,920 | 1,920 |
| 7 | 1.6 | Planejamento Realizado | milestone | 0d | 2021-04-12 A | 2021-04-12 A | 6 | 100% |  | 2021-04-12 | 2021-04-12 | 0d |  |  |  |  |  |  |  |
| 8 | 2 | **Viabilidade Financeira e Licenças** |  | 103.94d | 2021-04-13 A | 2021-09-03 |  | 91% | 9.12d | 2021-04-13 | 2021-09-03 | 103.94d | 83d |  | 1580h | 1420h | 169,130 | 152,650 | 151,930 |
| 9 | 2.1 | Coletar os requisitos do cliente |  | 20d | 2021-04-13 A | 2021-05-10 | 7 | 50% | 10d | 2021-04-13 | 2021-04-26 | 10d | 166.94d | Gerente de projeto; Recurso 3 | 320h | 160h | 34,400 | 17,200 | 17,200 |
| 10 | 2.2 | Elaborar o Orçamento |  | 3d | 2021-04-27 A | 2021-04-29 A | 9 | 100% |  | 2021-04-27 | 2021-04-29 | 3d |  | Gerente de projeto; Recurso 3 | 48h | 48h | 5,160 | 5,160 | 5,160 |
| 11 | 2.3 | Pesquisar e analisar o mercado |  | 5d | 2021-04-30 A | 2021-05-06 A | 10 | 100% |  | 2021-04-30 | 2021-05-06 | 5d |  | Gerente de projeto; Recurso 3 | 80h | 80h | 8,600 | 8,600 | 8,600 |
| 12 | 2.4 | Fazer a análise financeira |  | 10d | 2021-05-07 A | 2021-05-20 A | 11 | 100% |  | 2021-05-07 | 2021-05-20 | 10d |  | Gerente de projeto; Recurso 3 | 160h | 160h | 17,200 | 17,200 | 17,200 |
| 13 | 2.5 | Escolher o local |  | 20d | 2021-05-21 A | 2021-06-17 A | 12 | 100% |  | 2021-05-21 | 2021-06-17 | 20d |  | Gerente de projeto; Recurso 3 | 320h | 320h | 34,400 | 34,400 | 34,400 |
| 14 | 2.6 | Obter aprovação do projeto |  | 2d | 2021-06-18 A | 2021-06-21 A | 13 | 100% |  | 2021-06-18 | 2021-06-21 | 2d |  | Gerente de projeto; Recurso 3 | 32h | 32h | 2,720 | 3,440 | 2,720 |
| 15 | 2.7 | Obter alvará de construção |  | 26.25d | 2021-06-22 A | 2021-07-28 A | 14 | 100% |  | 2021-06-22 | 2021-07-28 | 26.25d |  | Gerente de projeto; Recurso 3 | 420h | 420h | 45,150 | 45,150 | 45,150 |
| 16 | 2.8 | Obter certificado de regularidade |  | 27.69d | 2021-07-28 A | 2021-09-03 A | 15 | 100% |  | 2021-07-28 | 2021-09-03 | 27.69d |  | Gerente de projeto; Recurso 3 | 200h | 200h | 21,500 | 21,500 | 21,500 |
| 17 | 2.9 | Viabilidade financeira realizada | milestone | 0d | 2021-09-03 A | 2021-09-03 A | 16 | 100% |  | 2021-09-03 | 2021-09-03 | 0d |  | Gerente de projeto; Recurso 3 |  |  |  |  |  |
| 18 | 3 | **Aquisições e Contratação** |  | 26d | 2021-09-03 A | 2021-10-11 A |  | 100% |  | 2021-09-03 | 2021-10-11 | 26d |  |  | 200h | 200h | 156,000 | 166,000 | 156,000 |
| 19 | 3.1 | Contratar a construtora |  | 5d | 2021-09-03 A | 2021-09-10 A | 17 | 100% |  | 2021-09-03 | 2021-09-10 | 5d |  | Recurso 1 | 40h | 40h | 3,200 | 3,200 | 3,200 |
| 20 | 3.2 | Adquirir o material |  | 20d | 2021-09-10 A | 2021-10-08 A | 19 | 100% |  | 2021-09-10 | 2021-10-08 | 20d |  | Recurso 4 | 160h | 160h | 12,800 | 12,800 | 12,800 |
| 21 | 3.3 | Material Adquirido |  | 1d | 2021-10-08 A | 2021-10-11 A | 20 | 100% |  | 2021-10-08 | 2021-10-11 | 1d |  | Material para a construção [1 Unidade] |  |  | 140,000 | 150,000 | 140,000 |
| 22 | 3.4 | Aquisições e Contratação realizadas | milestone | 0d | 2021-10-11 A | 2021-10-11 A | 21 | 100% |  | 2021-10-11 | 2021-10-11 | 0d |  |  |  |  |  |  |  |
| 23 | 4 | **Execução da Obra** |  | 40d | 2021-10-11 | 2021-12-06 |  |  |  | 2021-10-11 | 2021-12-06 | 40d | 0d |  | 320h |  | 128,000 | 128,000 |  |
| 24 | 4.1 | Executar a tarraplanagem |  | 3d | 2021-10-11 | 2021-10-14 | 22 |  |  | 2021-10-11 | 2021-10-14 | 3d | 0d | Construtora | 24h |  | 9,600 | 9,600 |  |
| 25 | 4.2 | Fazer a fundação |  | 15d | 2021-10-14 | 2021-11-04 | 24 |  |  | 2021-10-14 | 2021-11-04 | 15d | 0d | Construtora | 120h |  | 48,000 | 48,000 |  |
| 26 | 4.3 | Instalar trabalho de alvenaria |  | 8d | 2021-11-04 | 2021-11-16 | 25 |  |  | 2021-11-04 | 2021-11-16 | 8d | 0d | Construtora | 64h |  | 25,600 | 25,600 |  |
| 27 | 4.4 | Instalar a parte hidráulica |  | 4d | 2021-11-16 | 2021-11-22 | 26 |  |  | 2021-11-16 | 2021-11-22 | 4d | 0d | Construtora | 32h |  | 12,800 | 12,800 |  |
| 28 | 4.5 | Instalar a parte elétrica |  | 2d | 2021-11-22 | 2021-11-24 | 27 |  |  | 2021-11-22 | 2021-11-24 | 2d | 0d | Construtora | 16h |  | 6,400 | 6,400 |  |
| 29 | 4.6 | Instalar os portões |  | 5d | 2021-11-24 | 2021-12-01 | 28 |  |  | 2021-11-24 | 2021-12-01 | 5d | 0d | Construtora | 40h |  | 16,000 | 16,000 |  |
| 30 | 4.7 | Instalar as catracas |  | 2d | 2021-12-01 | 2021-12-03 | 29 |  |  | 2021-12-01 | 2021-12-03 | 2d | 0d | Construtora | 16h |  | 6,400 | 6,400 |  |
| 31 | 4.8 | Instalar as sinalizações |  | 1d | 2021-12-03 | 2021-12-06 | 30 |  |  | 2021-12-03 | 2021-12-06 | 1d | 0d | Construtora | 8h |  | 3,200 | 3,200 |  |
| 32 | 4.9 | Obra executada | milestone | 0d | 2021-12-06 | 2021-12-06 | 31 |  |  | 2021-12-06 | 2021-12-06 | 0d | 0d |  |  |  |  |  |  |

| ID | WBS | Task | Type | Duration | Start | Finish | Predecessors | Baseline start | Baseline finish | Baseline duration | Total slack | Resources | Work | Cost | Baseline cost |
| --- | --- | --- | --- | --- | --- | --- | --- | --- | --- | --- | --- | --- | --- | --- | --- |
| 33 | 5 | **Encerramento** |  | 17d | 2021-12-06 | 2021-12-29 |  | 2021-12-06 | 2021-12-29 | 17d | 0d |  | 168h | 10,360 | 10,360 |
| 34 | 5.1 | Obter alvará de funcionamento |  | 15d | 2021-12-06 | 2021-12-27 | 32 | 2021-12-06 | 2021-12-27 | 15d | 0d | Recurso 2 | 120h | 6,000 | 6,000 |
| 35 | 5.2 | Obter aceite do cliente |  | 1d | 2021-12-27 | 2021-12-28 | 34 | 2021-12-27 | 2021-12-28 | 1d | 0d | Gerente de projeto | 8h | 960 | 960 |
| 36 | 5.3 | Realizar a inauguração |  | 1d | 2021-12-28 | 2021-12-29 | 35 | 2021-12-28 | 2021-12-29 | 1d | 0d | Gerente de projeto; Recurso 1; Recurso 2; Recurso 3; Recurso 4 | 40h | 3,400 | 3,400 |
| 37 | 5.4 | Projeto encerrado | milestone | 0d | 2021-12-29 | 2021-12-29 | 36 | 2021-12-29 | 2021-12-29 | 0d | 0d |  |  |  |  |
